# Project Gantt Chart

How a schedule from MS Project changed from version to version. A marks actual dates.

## Version 1 (saved 2011-08-13, file COMS - Gantt Chart.mpp)

| ID | WBS | Task | Duration | Start | Finish | Predecessors | Total float |
| --- | --- | --- | --- | --- | --- | --- | --- |
| 1 | 1 | **Initial Planning** | 15d? | 2011-02-01 | 2011-02-21 |  | 0d |
| 2 |  | Produce Project Plan | 7d | 2011-02-01 | 2011-02-09 |  | 0d |
| 3 |  | Produce Quality Plan | 7d? | 2011-02-01 | 2011-02-09 |  | 4d |
| 4 |  | Set-up filing system | 4d? | 2011-02-10 | 2011-02-15 | 2 | 0d |
| 5 |  | Review/finalize Plan | 4d? | 2011-02-16 | 2011-02-21 | 2, 3, 4 | 0d |
| 6 | 2 | **Requirements Identification** | 20d? | 2011-02-22 | 2011-03-21 |  | 0d |
| 7 |  | Interview Users | 6d? | 2011-02-22 | 2011-03-01 | 5 | 0d |
| 8 |  | Undertake Use Case Modeling | 4d? | 2011-03-02 | 2011-03-07 | 7 | 0d |
| 9 |  | Produce Use Case Model Survey | 6d? | 2011-03-08 | 2011-03-15 | 8 | 0d |
| 10 |  | Review/finalize Requirements documentation | 4d? | 2011-03-16 | 2011-03-21 | 9 | 0d |
| 11 | 3 | **Requirements Specification** | 27.75d? | 2011-03-22 | 2011-04-28 |  | 0d |
| 12 |  | Identify Domain Objects/Attributes | 5.5d? | 2011-03-22 | 2011-03-29 | 10 | 0d |
| 13 |  | Produce Class diagrams | 12d? | 2011-03-29 | 2011-04-14 | 12 | 2.25d |
| 14 |  | Write UCRR (Analysis) | 14.25d? | 2011-03-29 | 2011-04-18 | 12 | 0d |
| 15 |  | Review/finalize Use Case Realization Reports | 8d? | 2011-04-18 | 2011-04-28 | 13, 14 | 0d |
| 16 | 4 | **Design Modeling** | 43.25d? | 2011-04-28 | 2011-06-28 |  | 0d |
| 17 |  | Prototype User Interface | 20d? | 2011-04-28 | 2011-05-26 | 15 | 168.38d |
| 18 |  | Create transition strategy from analysis to design | 7d? | 2011-04-28 | 2011-05-09 | 15 | 0d |
| 19 |  | Define software architecture | 7d? | 2011-05-09 | 2011-05-18 | 18 | 0d |
| 20 |  | Create DB Design | 7d? | 2011-05-18 | 2011-05-27 | 19 | 7.25d |
| 21 |  | Write UCRR (Design) | 14.25d? | 2011-05-18 | 2011-06-07 | 19 | 0d |
| 22 |  | Produce Object Specifications | 7d? | 2011-05-09 | 2011-05-18 | 18 | 174.38d |
| 23 |  | Produce Design Model Report | 7d? | 2011-06-08 | 2011-06-16 | 18, 19, 20, 21 | 0d |
| 24 |  | Review/finalize Design Document | 8d? | 2011-06-17 | 2011-06-28 | 23 | 0d |
| 25 | 5 | **Programming** | 47d? | 2011-06-29 | 2011-09-01 |  | 0d |
| 26 |  | Software Coding | 40d? | 2011-06-29 | 2011-08-23 | 24 | 0d |
| 27 |  | Define Database tables and fields | 6d? | 2011-06-29 | 2011-07-06 | 24 | 139.12d |
| 28 |  | Perform Unit Testing | 7d? | 2011-08-24 | 2011-09-01 | 26 | 0d |
| 29 | 6 | **Database Migration** | 39.12d? | 2011-09-02 | 2011-10-27 |  | 0d |
| 30 |  | Produce Database migration plan | 7d? | 2011-09-02 | 2011-09-12 | 28 | 0d |
| 31 |  | Review/finalize Database migration plan | 8.12d? | 2011-09-13 | 2011-09-23 | 30 | 0d |
| 32 |  | Extract Data from existing database | 8d? | 2011-09-23 | 2011-10-05 | 31 | 0d |
| 33 |  | Data Checking & Data cleaning | 8d? | 2011-10-05 | 2011-10-17 | 32 | 0d |
| 34 |  | Upload data into new database | 8d? | 2011-10-17 | 2011-10-27 | 33 | 0d |
| 35 | 7 | **Systems Testing** | 65.12d? | 2011-09-02 | 2011-12-02 |  | 33d |
| 36 |  | Prepare Systems Test Plan | 7d? | 2011-10-27 | 2011-11-07 | 34 | 0d |
| 37 |  | Review/finalize Systems Test Plan | 4d? | 2011-11-07 | 2011-11-11 | 36 | 0d |
| 38 |  | Integrate Code components & Database | 7d? | 2011-09-02 | 2011-09-12 | 28 | 91.12d |
| 39 |  | Perform Systems Testing | 7d? | 2011-11-11 | 2011-11-22 | 37 | 0d |
| 40 |  | Review Results/Corrective Action | 8d? | 2011-11-22 | 2011-12-02 | 39 | 0d |
| 41 | 8 | **User Trial** | 33d? | 2011-12-02 | 2012-01-18 |  | 0d |
| 42 |  | Write User Guide | 7d? | 2011-12-02 | 2011-12-13 | 40 | 22d |
| 43 |  | Review/finalize User Guide | 4d? | 2011-12-13 | 2011-12-19 | 42 | 22d |
| 44 |  | Write Trial test plan | 7d? | 2011-12-02 | 2011-12-13 | 40 | 0d |
| 45 |  | Review/finalize Trial test plan | 4d? | 2011-12-13 | 2011-12-19 | 44 | 0d |
| 46 |  | Install System | 8d? | 2011-12-19 | 2011-12-29 | 45 | 0d |
| 47 |  | Perform User Trial | 7d? | 2011-12-29 | 2012-01-09 | 46 | 0d |
| 48 |  | Review Test Results/Corrective Action | 7d? | 2012-01-09 | 2012-01-18 | 47 | 0d |

## Version 2 (saved 2011-08-19, file COMS - Gantt Chart Hr v1.0.mpp)

Last finish 2012-01-18 → 2012-01-19 (+1d). Complete tasks 0 → 1.

Added:

| ID | Task | Duration | Start | Finish | Resources |
| --- | --- | --- | --- | --- | --- |
| 48 | **Management & Administration** | 40d | 2011-02-01 A | 2011-03-28 |  |
| 49 | General Management & Administration | 20d | 2011-02-01 A | 2011-02-28 | PL |
| 50 | Record Minutes of Meeting | 40d | 2011-02-01 A | 2011-03-28 | PR3 |

Removed: 28 Perform Unit Testing

Changed:

| ID | Task | Start | Finish | Duration | Complete | Total float | Predecessors | Other |
| --- | --- | --- | --- | --- | --- | --- | --- | --- |
| 1 | **Initial Planning** | 2011-02-01 A | 2011-02-21 → 2011-02-24 (+3d) | 15d? → 18d | 0% → 56% | 0d → 235d |  | baseline start none → 2011-02-01; baseline finish none → 2011-02-24 |
| 2 | Produce Project Plan | 2011-02-01 A | 2011-02-09 → 2011-02-11 (+2d) | 7d → 9d | 0% → 81% | 0d → 236.67d |  | resources PL; PR1; PR2; PR3 → PL; baseline start none → 2011-02-01; baseline finish none → 2011-02-11 |
| 3 | Produce Quality Plan | 2011-02-01 A | 2011-02-09 → 2011-02-11 (+2d) | 7d? → 9d | 0% → 67% | 4d → 241d |  | resources QM; PR1; PR2; PR3 → QM; baseline start none → 2011-02-01; baseline finish none → 2011-02-11 |
| 4 | Set-up filing system | 2011-02-10 → 2011-02-14 A (+4d) | 2011-02-15 → 2011-02-21 (+6d) | 4d? → 6d | 0% → 28% | 0d → 235d |  | baseline start none → 2011-02-14; baseline finish none → 2011-02-21 |
| 5 | Review/finalize Plan | 2011-02-16 → 2011-02-22 (+6d) | 2011-02-21 → 2011-02-24 (+3d) | 4d? → 3d |  | 0d → 235d |  | baseline start none → 2011-02-22; baseline finish none → 2011-02-24 |
| 6 | **Requirements Identification** | 2011-02-22 → 2011-02-25 A (+3d) | 2011-03-21 → 2011-04-06 (+16d) | 20d? → 29d | 0% → 31% |  |  | baseline start none → 2011-02-25; baseline finish none → 2011-04-06 |
| 7 | Interview Users | 2011-02-22 → 2011-02-25 A (+3d) | 2011-03-01 → 2011-03-09 A (+8d) | 6d? → 9d | 0% → 100% | 0d → none |  | baseline start none → 2011-02-25; baseline finish none → 2011-03-09 |
| 8 | Undertake Use Case Modeling | 2011-03-02 → 2011-03-10 (+8d) | 2011-03-07 → 2011-03-16 (+9d) | 4d? → 5d |  |  |  | resources QM; PL; TL → PL; baseline start none → 2011-03-10; baseline finish none → 2011-03-16 |
| 9 | Produce Use Case Model Survey | 2011-03-08 → 2011-03-17 (+9d) | 2011-03-15 → 2011-03-29 (+14d) | 6d? → 9d |  |  |  | baseline start none → 2011-03-17; baseline finish none → 2011-03-29 |
| 10 | Review/finalize Requirements documentation | 2011-03-16 → 2011-03-30 (+14d) | 2011-03-21 → 2011-04-06 (+16d) | 4d? → 6d |  |  |  | baseline start none → 2011-03-30; baseline finish none → 2011-04-06 |
| 11 | **Requirements Specification** | 2011-03-22 → 2011-04-07 (+16d) | 2011-04-28 → 2011-06-06 (+39d) | 27.75d? → 43d |  |  |  | baseline start none → 2011-04-07; baseline finish none → 2011-06-06 |
| 12 | Identify Domain Objects/Attributes | 2011-03-22 → 2011-04-07 (+16d) | 2011-03-29 → 2011-04-11 (+13d) | 5.5d? → 3d |  |  |  | resources PR1; PR2; PR3 → PR1; PR2; QM; baseline start none → 2011-04-07; baseline finish none → 2011-04-11 |
| 13 | Produce Class diagrams | 2011-03-29 → 2011-04-12 (+14d) | 2011-04-14 → 2011-04-22 (+8d) | 12d? → 9d |  | 2.25d → 0d |  | baseline start none → 2011-04-12; baseline finish none → 2011-04-22 |
| 14 | Write UCRR (Analysis) | 2011-03-29 → 2011-04-25 (+27d) | 2011-04-18 → 2011-05-27 (+39d) | 14.25d? → 25d |  |  | 12 → 13 | resources PR1; PR2; PR3 → PR1; PR2; QM; baseline start none → 2011-04-25; baseline finish none → 2011-05-27 |
| 15 | Review/finalize Use Case Realization Reports | 2011-04-18 → 2011-05-30 (+42d) | 2011-04-28 → 2011-06-06 (+39d) | 8d? → 6d |  |  |  | baseline start none → 2011-05-30; baseline finish none → 2011-06-06 |
| 16 | **Design Modeling** | 2011-04-28 → 2011-06-07 (+40d) | 2011-06-28 → 2011-08-16 (+49d) | 43.25d? → 51d |  |  |  | baseline start none → 2011-06-07; baseline finish none → 2011-08-16 |
| 17 | Prototype User Interface | 2011-04-28 → 2011-06-07 (+40d) | 2011-05-26 → 2011-06-27 (+32d) | 20d? → 15d |  | 168.38d → 148d |  | resources TL; QM; PR1 → TL; QM; PR2; baseline start none → 2011-06-07; baseline finish none → 2011-06-27 |
| 18 | Create transition strategy from analysis to design | 2011-04-28 → 2011-06-07 (+40d) | 2011-05-09 → 2011-06-13 (+35d) | 7d? → 5d |  |  |  | baseline start none → 2011-06-07; baseline finish none → 2011-06-13 |
| 19 | Define software architecture | 2011-05-09 → 2011-06-14 (+36d) | 2011-05-18 → 2011-06-20 (+33d) | 7d? → 5d |  |  |  | resources PL → TL; baseline start none → 2011-06-14; baseline finish none → 2011-06-20 |
| 20 | Create DB Design | 2011-05-18 → 2011-06-21 (+34d) | 2011-05-27 → 2011-06-27 (+31d) | 7d? → 5d |  | 7.25d → 20d |  | baseline start none → 2011-06-21; baseline finish none → 2011-06-27 |
| 21 | Write UCRR (Design) | 2011-05-18 → 2011-06-21 (+34d) | 2011-06-07 → 2011-07-25 (+48d) | 14.25d? → 25d |  |  |  | resources PR1; PR2; PR3 → PR1; PR2; QM; baseline start none → 2011-06-21; baseline finish none → 2011-07-25 |
| 22 | Produce Object Specifications | 2011-05-09 → 2011-07-26 (+78d) | 2011-05-18 → 2011-08-01 (+75d) | 7d? → 5d |  | 174.38d → 123d | 18 → 21 | resources PR1; PR2; PR3 → PR1; PR2; QM; baseline start none → 2011-07-26; baseline finish none → 2011-08-01 |
| 23 | Produce Design Model Report | 2011-06-08 → 2011-07-26 (+48d) | 2011-06-16 → 2011-08-08 (+53d) | 7d? → 10d |  |  |  | baseline start none → 2011-07-26; baseline finish none → 2011-08-08 |
| 24 | Review/finalize Design Document | 2011-06-17 → 2011-08-09 (+53d) | 2011-06-28 → 2011-08-16 (+49d) | 8d? → 6d |  |  |  | baseline start none → 2011-08-09; baseline finish none → 2011-08-16 |
| 25 | **Programming** | 2011-06-29 → 2011-08-17 (+49d) | 2011-09-01 → 2011-10-04 (+33d) | 47d? → 35d |  |  |  | baseline start none → 2011-08-17; baseline finish none → 2011-10-04 |
| 26 | Define Database tables and fields | 2011-06-29 → 2011-08-17 (+49d) | 2011-07-06 → 2011-08-23 (+48d) | 6d? → 5d |  | 139.12d → 0d |  | baseline start none → 2011-08-17; baseline finish none → 2011-08-23 |
| 27 | Software Coding | 2011-06-29 → 2011-08-24 (+56d) | 2011-08-23 → 2011-10-04 (+42d) | 40d? → 30d |  |  | 24 → 26 | resources PL; QM; TL; PR1; PR2; PR3 → PL [20%]; QM; TL; PR1; PR2; baseline start none → 2011-08-24; baseline finish none → 2011-10-04 |
| 28 | **Systems Testing** | 2011-09-02 → 2011-08-17 (-16d) | 2011-12-02 → 2011-11-08 (-24d) | 65.12d? → 60d |  | 33d → 35d |  | baseline start none → 2011-08-17; baseline finish none → 2011-11-08 |
| 29 | Prepare Systems Test Plan | 2011-10-27 → 2011-08-17 (-71d) | 2011-11-07 → 2011-08-30 (-69d) | 7d? → 10d |  | 0d → 89d | 39 → 24 | resources PL; QM; TL → PL [80%]; PR3; baseline start none → 2011-08-17; baseline finish none → 2011-08-30 |
| 30 | Review/finalize Systems Test Plan | 2011-11-07 → 2011-08-31 (-68d) | 2011-11-11 → 2011-09-02 (-70d) | 4d? → 3d |  | 0d → 99d |  | resources PL; QM; TL → PL [80%]; baseline start none → 2011-08-31; baseline finish none → 2011-09-02 |
| 31 | Integrate Code components & Database | 2011-09-02 → 2011-10-05 (+33d) | 2011-09-12 → 2011-10-11 (+29d) | 7d? → 5d |  | 91.12d → 0d | Perform Unit Testing → 27 | baseline start none → 2011-10-05; baseline finish none → 2011-10-11 |
| 32 | Perform Systems Testing | 2011-11-11 → 2011-10-12 (-30d) | 2011-11-22 → 2011-11-01 (-21d) | 7d? → 15d |  |  | 30 → 31 | baseline start none → 2011-10-12; baseline finish none → 2011-11-01 |
| 33 | Review Results/Corrective Action | 2011-11-22 → 2011-11-02 (-20d) | 2011-12-02 → 2011-11-08 (-24d) | 8d? → 5d |  |  |  | baseline start none → 2011-11-02; baseline finish none → 2011-11-08 |
| 34 | **Database Migration** | 2011-09-02 → 2011-11-09 (+68d) | 2011-10-27 → 2011-12-27 (+61d) | 39.12d? → 35d |  |  | none → 33 | baseline start none → 2011-11-09; baseline finish none → 2011-12-27 |
| 35 | Produce Database migration plan | 2011-09-02 → 2011-11-09 (+68d) | 2011-09-12 → 2011-11-22 (+71d) | 7d? → 10d |  |  | Perform Unit Testing → 33 | resources TL → TL; PL; baseline start none → 2011-11-09; baseline finish none → 2011-11-22 |
| 36 | Review/finalize Database migration plan | 2011-09-13 → 2011-11-23 (+71d) | 2011-09-23 → 2011-11-29 (+67d) | 8.12d? → 5d |  |  |  | resources PL; QM; TL → PL; TL; PR1; baseline start none → 2011-11-23; baseline finish none → 2011-11-29 |
| 37 | Extract Data from existing database | 2011-09-23 → 2011-11-30 (+68d) | 2011-10-05 → 2011-12-06 (+62d) | 8d? → 5d |  |  |  | baseline start none → 2011-11-30; baseline finish none → 2011-12-06 |
| 38 | Data Checking & Data cleaning | 2011-10-05 → 2011-12-07 (+63d) | 2011-10-17 → 2011-12-20 (+64d) | 8d? → 10d |  |  |  | resources PL; QM; TL; PR1; PR2; PR3 → TL; PR1; baseline start none → 2011-12-07; baseline finish none → 2011-12-20 |
| 39 | Upload data into new database | 2011-10-17 → 2011-12-21 (+65d) | 2011-10-27 → 2011-12-27 (+61d) | 8d? → 5d |  |  |  | baseline start none → 2011-12-21; baseline finish none → 2011-12-27 |
| 40 | **User Trial** | 2011-12-02 → 2011-08-31 (-93d) | 2012-01-18 → 2012-01-19 (+1d) | 33d? → 102d |  |  |  | baseline start none → 2011-08-31; baseline finish none → 2012-01-19 |
| 41 | Write User Guide | 2011-12-02 → 2011-08-31 (-93d) | 2011-12-13 → 2011-09-13 (-91d) | 7d? → 10d |  | 22d → 89d | 33 → 29 | resources PR1 → PR3; baseline start none → 2011-08-31; baseline finish none → 2011-09-13 |
| 42 | Review/finalize User Guide | 2011-12-13 → 2011-09-14 (-90d) | 2011-12-19 → 2011-09-16 (-94d) | 4d? → 3d |  | 22d → 89d |  | baseline start none → 2011-09-14; baseline finish none → 2011-09-16 |
| 43 | Write Trial test plan | 2011-12-02 → 2011-11-09 (-23d) | 2011-12-13 → 2011-11-22 (-21d) | 7d? → 10d |  | 0d → 25d |  | resources PL; QM; TL → PR3; baseline start none → 2011-11-09; baseline finish none → 2011-11-22 |
| 44 | Review/finalize Trial test plan | 2011-12-13 → 2011-11-23 (-20d) | 2011-12-19 → 2011-11-25 (-24d) | 4d? → 3d |  | 0d → 39d |  | baseline start none → 2011-11-23; baseline finish none → 2011-11-25 |
| 45 | Install System | 2011-12-19 → 2011-12-28 (+9d) | 2011-12-29 → 2011-12-30 (+1d) | 8d? → 3d |  |  | 44 → 39, 43 | baseline start none → 2011-12-28; baseline finish none → 2011-12-30 |
| 46 | Perform User Trial | 2011-12-29 → 2012-01-02 (+4d) | 2012-01-09 → 2012-01-06 (-3d) | 7d? → 5d |  |  |  | baseline start none → 2012-01-02; baseline finish none → 2012-01-06 |
| 47 | Review Test Results/Corrective Action |  | 2012-01-18 → 2012-01-19 (+1d) | 7d? → 9d |  |  |  | baseline start none → 2012-01-09; baseline finish none → 2012-01-19 |
