# Project Gantt Chart

How a schedule from MS Project changed from version to version. A marks actual dates.

## Version 1 (saved 2011-08-13, file COMS - Gantt Chart.mpp)

| ID | WBS | Task | Duration | Start | Finish | Predecessors | Total float |
| --- | --- | --- | --- | --- | --- | --- | --- |
| 1 | 1 | **Initial Planning** | 4d? | 2011-02-01 | 2011-02-04 |  | 0d |
| 2 |  | Produce Project Plan | 2d | 2011-02-01 | 2011-02-02 |  | 0d |
| 3 |  | Produce Quality Plan | 2d? | 2011-02-01 | 2011-02-02 |  | 1d |
| 4 |  | Set-up filing system | 1d? | 2011-02-03 | 2011-02-03 | 2 | 0d |
| 5 |  | Review/finalize Plan | 1d? | 2011-02-04 | 2011-02-04 | 2, 3, 4 | 0d |
| 6 | 2 | **Requirements Identification** | 4d? | 2011-02-07 | 2011-02-10 |  | 0d |
| 7 |  | Interview Users | 1d? | 2011-02-07 | 2011-02-07 | 5 | 0d |
| 8 |  | Undertake Use Case Modeling | 1d? | 2011-02-08 | 2011-02-08 | 7 | 0d |
| 9 |  | Produce Use Case Model Survey | 1d? | 2011-02-09 | 2011-02-09 | 8 | 0d |
| 10 |  | Review/finalize Requirements documentation | 1d? | 2011-02-10 | 2011-02-10 | 9 | 0d |
| 11 | 3 | **Requirements Specification** | 3d? | 2011-02-11 | 2011-02-15 |  | 0d |
| 12 |  | Identify Domain Objects/Attributes | 1d? | 2011-02-11 | 2011-02-11 | 10 | 0d |
| 13 |  | Produce Class diagrams | 1d? | 2011-02-14 | 2011-02-14 | 12 | 0d |
| 14 |  | Write UCRR (Analysis) | 1d? | 2011-02-14 | 2011-02-14 | 12 | 0d |
| 15 |  | Review/finalize Use Case Realization Reports | 1d? | 2011-02-15 | 2011-02-15 | 13, 14 | 0d |
| 16 | 4 | **Design Modeling** | 5d? | 2011-02-16 | 2011-02-22 |  | 0d |
| 17 |  | Prototype User Interface | 1d? | 2011-02-16 | 2011-02-16 | 15 | 15d |
| 18 |  | Create transition strategy from analysis to design | 1d? | 2011-02-16 | 2011-02-16 | 15 | 0d |
| 19 |  | Define software architecture | 1d? | 2011-02-17 | 2011-02-17 | 18 | 0d |
| 20 |  | Create DB Design | 1d? | 2011-02-18 | 2011-02-18 | 19 | 0d |
| 21 |  | Write UCRR (Design) | 1d? | 2011-02-18 | 2011-02-18 | 19 | 0d |
| 22 |  | Produce Object Specifications | 1d? | 2011-02-17 | 2011-02-17 | 18 | 14d |
| 23 |  | Produce Design Model Report | 1d? | 2011-02-21 | 2011-02-21 | 18, 19, 20, 21 | 0d |
| 24 |  | Review/finalize Design Document | 1d? | 2011-02-22 | 2011-02-22 | 23 | 0d |
| 25 | 5 | **Programming** | 2d? | 2011-02-23 | 2011-02-24 |  | 0d |
| 26 |  | Software Coding | 1d? | 2011-02-23 | 2011-02-23 | 24 | 0d |
| 27 |  | Define Database tables and fields | 1d? | 2011-02-23 | 2011-02-23 | 24 | 10d |
| 28 |  | Perform Unit Testing | 1d? | 2011-02-24 | 2011-02-24 | 26 | 0d |
| 29 | 6 | **Systems Testing** | 4d? | 2011-02-25 | 2011-03-02 |  | 0d |
| 30 |  | Prepare Systems Test Plan | 1d? | 2011-02-25 | 2011-02-25 | 28 | 0d |
| 31 |  | Review/finalize Systems Test Plan | 1d? | 2011-02-28 | 2011-02-28 | 30 | 0d |
| 32 |  | Integrate Code components & Database | 1d? | 2011-02-25 | 2011-02-25 | 28 | 3d |
| 33 |  | Perform Systems Testing | 1d? | 2011-03-01 | 2011-03-01 | 31 | 0d |
| 34 |  | Review Results/Corrective Action | 1d? | 2011-03-02 | 2011-03-02 | 33 | 0d |
| 35 | 7 | **Database Migration** | 5d? | 2011-02-28 | 2011-03-04 |  | 3d |
| 36 |  | Produce Database migration plan | 1d? | 2011-02-28 | 2011-02-28 | 32 | 3d |
| 37 |  | Review/finalize Database migration plan | 1d? | 2011-03-01 | 2011-03-01 | 36 | 3d |
| 38 |  | Extract Data from existing database | 1d? | 2011-03-02 | 2011-03-02 | 37 | 3d |
| 39 |  | Data Checking & Data cleaning | 1d? | 2011-03-03 | 2011-03-03 | 38 | 3d |
| 40 |  | Upload data into new database | 1d? | 2011-03-04 | 2011-03-04 | 39 | 3d |
| 41 | 8 | **User Trial** | 5d? | 2011-03-03 | 2011-03-09 |  | 0d |
| 42 |  | Write User Guide | 1d? | 2011-03-03 | 2011-03-03 | 34 | 3d |
| 43 |  | Review/finalize User Guide | 1d? | 2011-03-04 | 2011-03-04 | 42 | 3d |
| 44 |  | Write Trial test plan | 1d? | 2011-03-03 | 2011-03-03 | 34 | 0d |
| 45 |  | Review/finalize Trial test plan | 1d? | 2011-03-04 | 2011-03-04 | 44 | 0d |
| 46 |  | Install System | 1d? | 2011-03-07 | 2011-03-07 | 45 | 0d |
| 47 |  | Perform User Trial | 1d? | 2011-03-08 | 2011-03-08 | 46 | 0d |
| 48 |  | Review Test Results/Corrective Action | 1d? | 2011-03-09 | 2011-03-09 | 47 | 0d |
| 49 | 9 | **Management & Administration** | 1d? | 2011-02-01 | 2011-02-01 |  | 26d |
| 50 |  | General Management & Administration | 1d? | 2011-02-01 | 2011-02-01 |  | 26d |

## Version 2 (saved 2011-08-19, file COMS - Gantt Chart % v1.1.mpp)

Last finish 2011-03-09 → 2012-01-26 (+323d). Complete tasks 0 → 16.

Added:

| ID | Task | Duration | Start | Finish | Resources |
| --- | --- | --- | --- | --- | --- |
| 50 | Record Minutes of Meeting | 40d | 2011-02-01 A | 2011-03-28 | PR3 |

Removed: 28 Perform Unit Testing

Changed:

| ID | Task | Start | Finish | Duration | Complete | Total float | Predecessors | Other |
| --- | --- | --- | --- | --- | --- | --- | --- | --- |
| 1 | **Initial Planning** | 2011-02-01 A | 2011-02-04 → 2011-03-02 A (+26d) | 4d? → 21.33d | 0% → 100% | 0d → none |  | baseline start none → 2011-02-01; baseline finish none → 2011-02-24 |
| 2 | Produce Project Plan | 2011-02-01 A | 2011-02-02 → 2011-02-11 A (+9d) | 2d → 9d | 0% → 100% | 0d → none |  | resources none → PL; baseline start none → 2011-02-01; baseline finish none → 2011-02-11 |
| 3 | Produce Quality Plan | 2011-02-01 A | 2011-02-02 → 2011-02-14 A (+12d) | 2d? → 9.67d | 0% → 100% | 1d → none |  | resources none → QM; baseline start none → 2011-02-01; baseline finish none → 2011-02-11 |
| 4 | Set-up filing system | 2011-02-03 → 2011-02-14 A (+11d) | 2011-02-03 → 2011-02-21 A (+18d) | 1d? → 6d | 0% → 100% | 0d → none |  | resources none → QM; baseline start none → 2011-02-14; baseline finish none → 2011-02-21 |
| 5 | Review/finalize Plan | 2011-02-04 → 2011-02-22 A (+18d) | 2011-02-04 → 2011-03-02 A (+26d) | 1d? → 6.33d | 0% → 100% | 0d → none |  | resources none → PL; QM; TL; baseline start none → 2011-02-22; baseline finish none → 2011-02-24 |
| 6 | **Requirements Identification** | 2011-02-07 → 2011-02-25 A (+18d) | 2011-02-10 → 2011-04-13 A (+62d) | 4d? → 33.67d | 0% → 100% | 0d → none |  | baseline start none → 2011-02-25; baseline finish none → 2011-04-06 |
| 7 | Interview Users | 2011-02-07 → 2011-02-25 A (+18d) | 2011-02-07 → 2011-03-09 A (+30d) | 1d? → 9d | 0% → 100% | 0d → none |  | resources none → PL; baseline start none → 2011-02-25; baseline finish none → 2011-03-09 |
| 8 | Undertake Use Case Modeling | 2011-02-08 → 2011-03-10 A (+30d) | 2011-02-08 → 2011-03-16 A (+36d) | 1d? → 5d | 0% → 100% | 0d → none |  | resources none → PL; baseline start none → 2011-03-10; baseline finish none → 2011-03-16 |
| 9 | Produce Use Case Model Survey | 2011-02-09 → 2011-03-17 A (+36d) | 2011-02-09 → 2011-03-29 A (+48d) | 1d? → 9d | 0% → 100% | 0d → none |  | resources none → PL; baseline start none → 2011-03-17; baseline finish none → 2011-03-29 |
| 10 | Review/finalize Requirements documentation | 2011-02-10 → 2011-03-30 A (+48d) | 2011-02-10 → 2011-04-13 A (+62d) | 1d? → 10.67d | 0% → 100% | 0d → none |  | resources none → PL; QM; TL; baseline start none → 2011-03-30; baseline finish none → 2011-04-06 |
| 11 | **Requirements Specification** | 2011-02-11 → 2011-04-13 A (+61d) | 2011-02-15 → 2011-06-13 A (+118d) | 3d? → 43d | 0% → 100% | 0d → none |  | baseline start none → 2011-04-07; baseline finish none → 2011-06-06 |
| 12 | Identify Domain Objects/Attributes | 2011-02-11 → 2011-04-13 A (+61d) | 2011-02-11 → 2011-04-18 A (+66d) | 1d? → 3d | 0% → 100% | 0d → none |  | resources none → PR1; PR2; QM; baseline start none → 2011-04-07; baseline finish none → 2011-04-11 |
| 13 | Produce Class diagrams | 2011-02-14 → 2011-04-18 A (+63d) | 2011-02-14 → 2011-04-29 A (+74d) | 1d? → 9d | 0% → 100% | 0d → none |  | resources none → PL; baseline start none → 2011-04-12; baseline finish none → 2011-04-22 |
| 14 | Write UCRR (Analysis) | 2011-02-14 → 2011-04-29 A (+74d) | 2011-02-14 → 2011-06-03 A (+109d) | 1d? → 25d | 0% → 100% | 0d → none | 12 → 13 | resources none → PR1; PR2; QM; baseline start none → 2011-04-25; baseline finish none → 2011-05-27 |
| 15 | Review/finalize Use Case Realization Reports | 2011-02-15 → 2011-06-03 A (+108d) | 2011-02-15 → 2011-06-13 A (+118d) | 1d? → 6d | 0% → 100% | 0d → none |  | resources none → PL; QM; TL; baseline start none → 2011-05-30; baseline finish none → 2011-06-06 |
| 16 | **Design Modeling** | 2011-02-16 → 2011-06-13 A (+117d) | 2011-02-22 → 2011-08-23 (+182d) | 5d? → 51d | 0% → 39% | 0d → 112d |  | baseline start none → 2011-06-07; baseline finish none → 2011-08-16 |
| 17 | Prototype User Interface | 2011-02-16 → 2011-06-13 A (+117d) | 2011-02-16 → 2011-07-04 A (+138d) | 1d? → 15d | 0% → 100% | 15d → none |  | resources none → TL; QM; PR2; baseline start none → 2011-06-07; baseline finish none → 2011-06-27 |
| 18 | Create transition strategy from analysis to design | 2011-02-16 → 2011-06-13 A (+117d) | 2011-02-16 → 2011-06-20 A (+124d) | 1d? → 5d | 0% → 100% | 0d → none |  | resources none → PL; baseline start none → 2011-06-07; baseline finish none → 2011-06-13 |
| 19 | Define software architecture | 2011-02-17 → 2011-06-20 A (+123d) | 2011-02-17 → 2011-06-27 A (+130d) | 1d? → 5d | 0% → 100% | 0d → none |  | resources none → TL; baseline start none → 2011-06-14; baseline finish none → 2011-06-20 |
| 20 | Create DB Design | 2011-02-18 → 2011-06-27 A (+129d) | 2011-02-18 → 2011-07-04 A (+136d) | 1d? → 5d | 0% → 100% | 0d → none |  | resources none → PL; baseline start none → 2011-06-21; baseline finish none → 2011-06-27 |
| 21 | Write UCRR (Design) | 2011-02-18 → 2011-06-27 (+129d) | 2011-02-18 → 2011-08-01 (+164d) | 1d? → 25d |  |  |  | resources none → PR1; PR2; QM; baseline start none → 2011-06-21; baseline finish none → 2011-07-25 |
| 22 | Produce Object Specifications | 2011-02-17 → 2011-08-01 (+165d) | 2011-02-17 → 2011-08-08 (+172d) | 1d? → 5d |  | 14d → 123d | 18 → 21 | resources none → PR1; PR2; QM; baseline start none → 2011-07-26; baseline finish none → 2011-08-01 |
| 23 | Produce Design Model Report | 2011-02-21 → 2011-08-01 (+161d) | 2011-02-21 → 2011-08-15 (+175d) | 1d? → 10d |  |  |  | resources none → TL; baseline start none → 2011-07-26; baseline finish none → 2011-08-08 |
| 24 | Review/finalize Design Document | 2011-02-22 → 2011-08-15 (+174d) | 2011-02-22 → 2011-08-23 (+182d) | 1d? → 6d |  |  |  | resources none → PL; QM; TL; baseline start none → 2011-08-09; baseline finish none → 2011-08-16 |
| 25 | **Programming** | 2011-02-23 → 2011-08-23 (+181d) | 2011-02-24 → 2011-10-11 (+229d) | 2d? → 35d |  |  |  | baseline start none → 2011-08-17; baseline finish none → 2011-10-04 |
| 26 | Define Database tables and fields | 2011-02-23 → 2011-08-23 (+181d) | 2011-02-23 → 2011-08-30 (+188d) | 1d? → 5d |  | 10d → 0d |  | resources none → TL; baseline start none → 2011-08-17; baseline finish none → 2011-08-23 |
| 27 | Software Coding | 2011-02-23 → 2011-08-30 (+188d) | 2011-02-23 → 2011-10-11 (+230d) | 1d? → 30d |  |  | 24 → 26 | resources none → PL [20%]; QM; TL; PR1; PR2; baseline start none → 2011-08-24; baseline finish none → 2011-10-04 |
| 28 | **Systems Testing** | 2011-02-25 → 2011-08-23 (+179d) | 2011-03-02 → 2011-11-15 (+258d) | 4d? → 60d |  | 0d → 35d |  | baseline start none → 2011-08-17; baseline finish none → 2011-11-08 |
| 29 | Prepare Systems Test Plan | 2011-02-25 → 2011-08-23 (+179d) | 2011-02-25 → 2011-09-06 (+193d) | 1d? → 10d |  | 0d → 89d | Perform Unit Testing → 24 | resources none → PL [80%]; PR3; baseline start none → 2011-08-17; baseline finish none → 2011-08-30 |
| 30 | Review/finalize Systems Test Plan | 2011-02-28 → 2011-09-06 (+190d) | 2011-02-28 → 2011-09-09 (+193d) | 1d? → 3d |  | 0d → 99d |  | resources none → PL [80%]; baseline start none → 2011-08-31; baseline finish none → 2011-09-02 |
| 31 | Integrate Code components & Database | 2011-02-25 → 2011-10-11 (+228d) | 2011-02-25 → 2011-10-18 (+235d) | 1d? → 5d |  | 3d → 0d | Perform Unit Testing → 27 | resources none → TL; baseline start none → 2011-10-05; baseline finish none → 2011-10-11 |
| 32 | Perform Systems Testing | 2011-03-01 → 2011-10-18 (+231d) | 2011-03-01 → 2011-11-08 (+252d) | 1d? → 15d |  |  | 30 → 31 | resources none → PR1; PR2; PR3; baseline start none → 2011-10-12; baseline finish none → 2011-11-01 |
| 33 | Review Results/Corrective Action | 2011-03-02 → 2011-11-08 (+251d) | 2011-03-02 → 2011-11-15 (+258d) | 1d? → 5d |  |  |  | resources none → PL; QM; TL; PR1; PR2; PR3; baseline start none → 2011-11-02; baseline finish none → 2011-11-08 |
| 34 | **Database Migration** | 2011-02-28 → 2011-11-15 (+260d) | 2011-03-04 → 2012-01-03 (+305d) | 5d? → 35d |  | 3d → 0d | none → 33 | baseline start none → 2011-11-09; baseline finish none → 2011-12-27 |
| 35 | Produce Database migration plan | 2011-02-28 → 2011-11-15 (+260d) | 2011-02-28 → 2011-11-29 (+274d) | 1d? → 10d |  | 3d → 0d | 31 → 33 | resources none → TL; PL; baseline start none → 2011-11-09; baseline finish none → 2011-11-22 |
| 36 | Review/finalize Database migration plan | 2011-03-01 → 2011-11-29 (+273d) | 2011-03-01 → 2011-12-06 (+280d) | 1d? → 5d |  | 3d → 0d |  | resources none → PL; TL; PR1; baseline start none → 2011-11-23; baseline finish none → 2011-11-29 |
| 37 | Extract Data from existing database | 2011-03-02 → 2011-12-06 (+279d) | 2011-03-02 → 2011-12-13 (+286d) | 1d? → 5d |  | 3d → 0d |  | resources none → PL; baseline start none → 2011-11-30; baseline finish none → 2011-12-06 |
| 38 | Data Checking & Data cleaning | 2011-03-03 → 2011-12-13 (+285d) | 2011-03-03 → 2011-12-27 (+299d) | 1d? → 10d |  | 3d → 0d |  | resources none → TL; PR1; baseline start none → 2011-12-07; baseline finish none → 2011-12-20 |
| 39 | Upload data into new database | 2011-03-04 → 2011-12-27 (+298d) | 2011-03-04 → 2012-01-03 (+305d) | 1d? → 5d |  | 3d → 0d |  | resources none → PL; baseline start none → 2011-12-21; baseline finish none → 2011-12-27 |
| 40 | **User Trial** | 2011-03-03 → 2011-09-06 (+187d) | 2011-03-09 → 2012-01-26 (+323d) | 5d? → 102d |  |  |  | baseline start none → 2011-08-31; baseline finish none → 2012-01-19 |
| 41 | Write User Guide | 2011-03-03 → 2011-09-06 (+187d) | 2011-03-03 → 2011-09-20 (+201d) | 1d? → 10d |  | 3d → 89d | 33 → 29 | resources none → PR3; baseline start none → 2011-08-31; baseline finish none → 2011-09-13 |
| 42 | Review/finalize User Guide | 2011-03-04 → 2011-09-20 (+200d) | 2011-03-04 → 2011-09-23 (+203d) | 1d? → 3d |  | 3d → 89d |  | resources none → QM; baseline start none → 2011-09-14; baseline finish none → 2011-09-16 |
| 43 | Write Trial test plan | 2011-03-03 → 2011-11-15 (+257d) | 2011-03-03 → 2011-11-29 (+271d) | 1d? → 10d |  | 0d → 25d |  | resources none → PR3; baseline start none → 2011-11-09; baseline finish none → 2011-11-22 |
| 44 | Review/finalize Trial test plan | 2011-03-04 → 2011-11-29 (+270d) | 2011-03-04 → 2011-12-02 (+273d) | 1d? → 3d |  | 0d → 39d |  | resources none → PL; QM; TL; baseline start none → 2011-11-23; baseline finish none → 2011-11-25 |
| 45 | Install System | 2011-03-07 → 2012-01-03 (+302d) | 2011-03-07 → 2012-01-06 (+305d) | 1d? → 3d |  |  | 44 → 39, 43 | resources none → PL; baseline start none → 2011-12-28; baseline finish none → 2011-12-30 |
| 46 | Perform User Trial | 2011-03-08 → 2012-01-06 (+304d) | 2011-03-08 → 2012-01-13 (+311d) | 1d? → 5d |  |  |  | resources none → PL; baseline start none → 2012-01-02; baseline finish none → 2012-01-06 |
| 47 | Review Test Results/Corrective Action | 2011-03-09 → 2012-01-13 (+310d) | 2011-03-09 → 2012-01-26 (+323d) | 1d? → 9d |  |  |  | resources none → PL; QM; TL; PR1; PR2; PR3; baseline start none → 2012-01-09; baseline finish none → 2012-01-19 |
| 48 | **Management & Administration** | 2011-02-01 A | 2011-02-01 → 2011-03-28 (+55d) | 1d? → 40d | 0% → 32% | 26d → 217.67d |  | baseline start none → 2011-02-01; baseline finish none → 2011-03-28 |
| 49 | General Management & Administration | 2011-02-01 A | 2011-02-01 → 2011-02-28 (+27d) | 1d? → 20d | 0% → 47% | 26d → 237.67d |  | resources none → PL; baseline start none → 2011-02-01; baseline finish none → 2011-02-28 |

## Version 3 (saved 2011-08-20, file COMS - Gantt Chart % v1.1.mpp)

Note of the change: Updated and formatted PP, URS, UCMS, HLDS, Rose

Last finish 2012-01-26 → 2012-01-06 (-20d). Complete tasks 16 → 17.

Added:

| ID | Task | Duration | Start | Finish | Predecessors | Resources |
| --- | --- | --- | --- | --- | --- | --- |
| 28 | Set up source structure | 1d | 2011-08-10 | 2011-08-10 | 26 | TL |
| 29 | Component Coding | 20d | 2011-08-11 | 2011-09-07 | 28 | QM; PR1; PR2; PL |
| 30 | Unit Testing | 5d | 2011-09-08 | 2011-09-14 | 29 | QM; PR1; PR2 |
| 31 | Peer Review Testing | 5d | 2011-09-15 | 2011-09-21 | 30 | PL; TL; PR3 |

Changed:

| ID | Task | Start | Finish | Duration | Complete | Total float | Predecessors | Other |
| --- | --- | --- | --- | --- | --- | --- | --- | --- |
| 1 | **Initial Planning** |  | 2011-03-02 A → 2011-02-24 A (-6d) | 21.33d → 18d |  |  |  |  |
| 3 | Produce Quality Plan |  | 2011-02-14 A → 2011-02-11 A (-3d) | 9.67d → 9d |  |  |  |  |
| 5 | Review/finalize Plan |  | 2011-03-02 A → 2011-02-24 A (-6d) | 6.33d → 3d |  |  |  |  |
| 6 | **Requirements Identification** |  | 2011-04-13 A → 2011-04-06 A (-7d) | 33.67d → 29d |  |  | none → 5 |  |
| 10 | Review/finalize Requirements documentation |  | 2011-04-13 A → 2011-04-06 A (-7d) | 10.67d → 6d |  |  |  | constraint none → finish no earlier than 2011-04-06 |
| 11 | **Requirements Specification** | 2011-04-13 A → 2011-04-07 A (-6d) | 2011-06-13 A → 2011-05-30 A (-14d) | 43d → 38d |  |  |  |  |
| 12 | Identify Domain Objects/Attributes | 2011-04-13 A → 2011-04-07 A (-6d) | 2011-04-18 A → 2011-04-11 A (-7d) |  |  |  | 10 → none |  |
| 13 | Produce Class diagrams | 2011-04-18 A → 2011-04-12 A (-6d) | 2011-04-29 A → 2011-04-22 A (-7d) |  |  |  |  |  |
| 14 | Write UCRR (Analysis) | 2011-04-29 A → 2011-04-25 A (-4d) | 2011-06-03 A → 2011-05-20 A (-14d) | 25d → 20d |  |  |  | resources PR1; PR2; QM → PR1; PR2 [50%]; QM [50%] |
| 15 | Review/finalize Use Case Realization Reports | 2011-06-03 A → 2011-05-23 A (-11d) | 2011-06-13 A → 2011-05-30 A (-14d) |  |  |  |  |  |
| 16 | **Design Modeling** | 2011-06-13 A → 2011-04-25 A (-49d) | 2011-08-23 → 2011-08-02 (-21d) | 51d → 72d | 39% → 42% | 112d → 108d |  |  |
| 17 | Prototype User Interface | 2011-06-13 A → 2011-04-25 A (-49d) | 2011-07-04 A → 2011-05-13 A (-52d) |  |  |  | 15 → 13 | resources TL; QM; PR2 → TL; QM [50%]; PR2 [50%] |
| 18 | Create transition strategy from analysis to design | 2011-06-13 A → 2011-05-31 A (-13d) | 2011-06-20 A → 2011-06-06 A (-14d) |  |  |  |  |  |
| 19 | Define software architecture | 2011-06-20 A → 2011-06-07 A (-13d) | 2011-06-27 A → 2011-06-13 A (-14d) |  |  |  |  |  |
| 20 | Create DB Design | 2011-06-27 A → 2011-06-14 A (-13d) | 2011-07-04 A → 2011-06-20 A (-14d) |  |  |  |  |  |
| 21 | Write UCRR (Design) | 2011-06-27 → 2011-06-14 (-13d) | 2011-08-01 → 2011-07-11 (-21d) | 25d → 20d |  | 0d → 5d |  |  |
| 22 | Produce Object Specifications | 2011-08-01 → 2011-07-12 (-20d) | 2011-08-08 → 2011-07-18 (-21d) |  |  |  |  |  |
| 23 | Produce Design Model Report | 2011-08-01 → 2011-07-12 (-20d) | 2011-08-15 → 2011-07-25 (-21d) |  |  | 0d → 5d |  |  |
| 24 | Review/finalize Design Document | 2011-08-15 → 2011-07-26 (-20d) | 2011-08-23 → 2011-08-02 (-21d) |  |  | 0d → 5d |  |  |
| 25 | **Programming** | 2011-08-23 → 2011-08-03 A (-20d) | 2011-10-11 → 2011-09-21 (-20d) | 35d → 36d | 0% → 14% |  |  |  |
| 26 | Define Database tables and fields | 2011-08-23 → 2011-08-03 A (-20d) | 2011-08-30 → 2011-08-09 A (-21d) |  | 0% → 100% | 0d → none |  |  |
| 27 | **Software Coding** | 2011-08-30 → 2011-08-10 (-20d) | 2011-10-11 → 2011-09-21 (-20d) | 30d → 31d |  |  |  | resources PL [20%]; QM; TL; PR1; PR2 → none |
| 32 | **Systems Testing** | 2011-08-23 → 2011-08-03 (-20d) | 2011-11-15 → 2011-10-26 (-20d) | 60d → 61d |  | 35d → 36d |  |  |
| 33 | Prepare Systems Test Plan | 2011-08-23 → 2011-08-03 (-20d) | 2011-09-06 → 2011-08-16 (-21d) |  |  | 89d → 85d |  |  |
| 34 | Review/finalize Systems Test Plan | 2011-09-06 → 2011-08-17 (-20d) | 2011-09-09 → 2011-08-19 (-21d) |  |  | 99d → 95d |  |  |
| 35 | Integrate Code components & Database | 2011-10-11 → 2011-09-22 (-19d) | 2011-10-18 → 2011-09-28 (-20d) |  |  |  |  |  |
| 36 | Perform Systems Testing | 2011-10-18 → 2011-09-29 (-19d) | 2011-11-08 → 2011-10-19 (-20d) |  |  |  |  |  |
| 37 | Review Results/Corrective Action | 2011-11-08 → 2011-10-20 (-19d) | 2011-11-15 → 2011-10-26 (-20d) |  |  |  |  |  |
| 38 | **Database Migration** | 2011-11-15 → 2011-10-27 (-19d) | 2012-01-03 → 2011-12-14 (-20d) |  |  |  |  |  |
| 39 | Produce Database migration plan | 2011-11-15 → 2011-10-27 (-19d) | 2011-11-29 → 2011-11-09 (-20d) |  |  |  |  |  |
| 40 | Review/finalize Database migration plan | 2011-11-29 → 2011-11-10 (-19d) | 2011-12-06 → 2011-11-16 (-20d) |  |  |  |  |  |
| 41 | Extract Data from existing database | 2011-12-06 → 2011-11-17 (-19d) | 2011-12-13 → 2011-11-23 (-20d) |  |  |  |  |  |
| 42 | Data Checking & Data cleaning | 2011-12-13 → 2011-11-24 (-19d) | 2011-12-27 → 2011-12-07 (-20d) |  |  |  |  |  |
| 43 | Upload data into new database | 2011-12-27 → 2011-12-08 (-19d) | 2012-01-03 → 2011-12-14 (-20d) |  |  |  |  |  |
| 44 | **User Trial** | 2011-09-06 → 2011-08-17 (-20d) | 2012-01-26 → 2012-01-06 (-20d) | 102d → 103d |  |  |  |  |
| 45 | Write User Guide | 2011-09-06 → 2011-08-17 (-20d) | 2011-09-20 → 2011-08-30 (-21d) |  |  | 89d → 85d |  |  |
| 46 | Review/finalize User Guide | 2011-09-20 → 2011-08-31 (-20d) | 2011-09-23 → 2011-09-02 (-21d) |  |  | 89d → 85d |  |  |
| 47 | Write Trial test plan | 2011-11-15 → 2011-10-27 (-19d) | 2011-11-29 → 2011-11-09 (-20d) |  |  |  |  |  |
| 48 | Review/finalize Trial test plan | 2011-11-29 → 2011-11-10 (-19d) | 2011-12-02 → 2011-11-14 (-18d) |  |  |  |  |  |
| 49 | Install System | 2012-01-03 → 2011-12-15 (-19d) | 2012-01-06 → 2011-12-19 (-18d) |  |  |  |  |  |
| 50 | Perform User Trial | 2012-01-06 → 2011-12-20 (-17d) | 2012-01-13 → 2011-12-26 (-18d) |  |  |  |  |  |
| 51 | Review Test Results/Corrective Action | 2012-01-13 → 2011-12-27 (-17d) | 2012-01-26 → 2012-01-06 (-20d) |  |  |  |  |  |
